# G7项目计划

Schedule from MS Project, 2017-10-11 to 2018-01-27, costs in ¥, A marks actual dates.
Microsoft

## Calendars

- 标准: Mon-Fri 08:00-12:00, 13:00-17:00; Sat-Sun off. Exceptions (off unless hours are given): 2017-10-13 to 2018-01-18 08:00-12:00, 13:00-17:00 (周日加班, recurring), 2017-10-13 to 2018-01-18 08:00-12:00, 13:00-17:00 (周六加班, recurring).

## Resources

| Resource | Rate |
| --- | --- |
| 葛倍良 | 30.97 |
| 黄鹏羽 | 30.97 |
| 金浩楠 | 30.97 |
| 余倩 | 30.97 |
| 周雨璐 | 30.97 |

## Schedule

| ID | WBS | Task | Type | Duration | Start | Finish | Predecessors | Complete | Actual start | Actual finish | Resources | Work | Actual work | Cost | Actual cost | 负责人 |
| --- | --- | --- | --- | --- | --- | --- | --- | --- | --- | --- | --- | --- | --- | --- | --- | --- |
| 1 | 1 | **项目启动** |  | 2ed | 2017-10-11 09:00 A | 2017-10-13 09:00 |  | 100% |  | 2017-10-12 11:00 |  | 11h | 11h | 340.67 | 340.67 | 葛倍良 |
| 2 | 1.1 | 项目提出 | milestone, manual | 0eh | 2017-10-11 09:00 A | 2017-10-11 09:00 A |  | 100% |  |  |  |  |  |  |  |  |
| 3 | 1.2 | 项目任务确定 | manual | 1h | 2017-10-11 09:00 A | 2017-10-12 09:00 A | 2 | 100% |  |  | 葛倍良 | 1h | 1h | 30.97 | 30.97 |  |
| 4 | 1.3 | 文档书写与PPT制作 | manual | 2h | 2017-10-12 09:00 A | 2017-10-12 11:00 A | 3 | 100% |  |  | 葛倍良 [20%]; 黄鹏羽 [20%]; 金浩楠 [20%]; 余倩 [20%]; 周雨璐 [20%] | 10h | 10h | 309.7 | 309.7 |  |
| 5 | 2 | **可行性分析报告** |  | 7.38ed | 2017-10-13 09:00 A | 2017-10-20 18:00 | 4 | 100% |  | 2017-10-13 14:00 |  | 18h | 18h | 557.46 | 557.46 | 葛倍良 |
| 6 | 2.1 | 技术可行性分析 | manual | 2eh | 2017-10-13 09:00 A | 2017-10-13 11:00 A | 4 | 100% |  |  | 周雨璐 | 2h | 2h | 61.94 | 61.94 |  |
| 7 | 2.2 | 操作可行性分析 | manual | 2eh | 2017-10-13 11:00 A | 2017-10-13 13:00 A | 6 | 100% |  |  | 周雨璐 | 2h | 2h | 61.94 | 61.94 |  |
| 8 | 2.3 | 法律可行性分析 | manual | 2eh | 2017-10-13 09:00 A | 2017-10-13 11:00 A | 7 | 100% |  |  | 周雨璐 | 2h | 2h | 61.94 | 61.94 |  |
| 9 | 2.4 | 可行性分析文档书写与修改 | manual | 4h | 2017-10-13 09:00 A | 2017-10-13 14:00 A | 8 | 100% |  |  | 葛倍良 [40%]; 金浩楠 [30%]; 余倩 [30%] | 12h | 12h | 371.64 | 371.64 |  |
| 10 | 3 | **项目章程** |  | 5.38ed | 2017-10-23 09:00 A | 2017-10-28 18:00 | 9 | 100% |  | 2017-10-23 14:00 |  | 4h | 4h | 123.88 | 123.88 | 葛倍良 |
| 11 | 3.1 | 文档书写与修改 | manual | 4h | 2017-10-23 09:00 A | 2017-10-23 14:00 A | 9 | 100% |  |  | 余倩 | 4h | 4h | 123.88 | 123.88 |  |
| 12 | 4 | **项目总体计划** |  | 10.38ed | 2017-10-19 09:00 | 2017-10-29 18:00 | 9, 11 | 100% | 2017-10-20 09:00 | 2017-10-24 13:00 |  | 28h | 28h | 867.16 | 867.16 | 葛倍良 |
| 13 | 4.1 | OBS | manual | 2eh | 2017-10-21 09:00 A | 2017-10-21 11:00 A | 11 | 100% |  |  | 黄鹏羽 | 2h | 2h | 61.94 | 61.94 |  |
| 14 | 4.2 | WBS | manual | 2eh | 2017-10-21 09:00 A | 2017-10-21 11:00 A | 13 | 100% |  |  | 黄鹏羽 | 2h | 2h | 61.94 | 61.94 |  |
| 15 | 4.3 | Gant | manual | 4eh | 2017-10-22 09:00 A | 2017-10-22 13:00 A | 14 | 100% |  |  | 黄鹏羽 | 4h | 4h | 123.88 | 123.88 |  |
| 16 | 4.4 | 文档书写与PPT制作 | manual | 0.83ed | 2017-10-20 09:00 A | 2017-10-24 13:00 A | 15 | 100% |  |  | 葛倍良 [20%]; 黄鹏羽 [20%]; 金浩楠 [20%]; 余倩 [20%]; 周雨璐 [20%] | 20h | 20h | 619.4 | 619.4 |  |
| 17 | 5 | **需求工程计划书** |  | 17.38ed | 2017-10-23 09:00 A | 2017-11-09 18:00 | 16 | 100% |  | 2017-11-06 12:00 |  | 152h | 152h | 4,707.44 | 4,707.44 | 葛倍良 |
| 18 | 5.1 | 需求工程计划书--初步版 | manual | 0.75ed | 2017-10-23 09:00 A | 2017-10-24 19:00 A | 16 | 100% |  |  | 葛倍良 [80%]; 黄鹏羽 [20%] | 10h | 10h | 309.7 | 309.7 |  |
| 19 | 5.2 | 需求工程计划书--修改版 | manual | 0.75ed | 2017-11-02 09:00 A | 2017-11-03 03:00 A | 18 | 100% |  |  | 葛倍良 [20%]; 黄鹏羽 [20%]; 金浩楠 [20%]; 余倩 [20%]; 周雨璐 [20%] | 18h | 18h | 557.46 | 557.46 |  |
| 20 | 5.3 | 需求工程计划评审 | manual | 1ed | 2017-11-03 09:00 A | 2017-11-04 09:00 A | 19 | 100% |  |  | 葛倍良 [20%]; 黄鹏羽 [20%]; 金浩楠 [20%]; 余倩 [20%]; 周雨璐 [20%] | 120h | 120h | 3,716.4 | 3,716.4 |  |
| 21 | 5.4 | 需求工程计划文档整理与PPT制作 | manual | 4h | 2017-11-06 08:00 A | 2017-11-06 12:00 A | 20 | 100% |  |  | 葛倍良 [20%]; 黄鹏羽 [20%]; 金浩楠 [20%]; 余倩 [20%]; 周雨璐 [20%] | 4h | 4h | 123.88 | 123.88 |  |
| 22 | 6 | **QA计划** |  | 6.38ed | 2017-10-30 09:00 A | 2017-11-05 18:00 | 16 | 100% |  | 2017-11-03 19:02 |  | 15.04h | 15.04h | 465.79 | 465.79 | 葛倍良 |
| 23 | 6.1 | 质量目标设定 | manual | 0.04ed | 2017-10-30 09:00 A | 2017-10-31 09:00 A | 16 | 100% |  |  | 葛倍良 | 1h | 1h | 30.97 | 30.97 |  |
| 24 | 6.2 | 评估与测试 | manual | 0.21ed | 2017-10-31 09:00 A | 2017-11-01 09:00 A | 23 | 100% |  |  | 金浩楠; 余倩; 周雨璐 | 3h | 3h | 92.91 | 92.91 |  |
| 25 | 6.3 | 质量记录 | manual | 2h | 2017-10-31 14:00 A | 2017-10-31 16:00 A | 24 | 100% |  |  | 金浩楠 | 2h | 2h | 61.94 | 61.94 |  |
| 26 | 6.4 | 风险管理 | manual | 2h | 2017-11-01 14:00 A | 2017-11-01 16:00 A | 25 | 100% |  |  | 余倩; 周雨璐 | 4h | 4h | 123.88 | 123.88 |  |
| 27 | 6.5 | 文档书写 | manual | 0.21ed | 2017-11-03 14:00 A | 2017-11-03 19:02 A | 26 | 100% |  |  | 葛倍良; 黄鹏羽; 金浩楠; 余倩; 周雨璐 | 5.04h | 5.04h | 156.09 | 156.09 |  |

| ID | WBS | Task | Type | Duration | Start | Finish | Predecessors | Complete | Actual start | Actual finish | Resources | Work | Actual work | Cost | Actual cost | 负责人 |
| --- | --- | --- | --- | --- | --- | --- | --- | --- | --- | --- | --- | --- | --- | --- | --- | --- |
| 28 | 7 | **软件需求规格说明书** |  | 35.38ed | 2017-11-19 09:00 A | 2017-12-24 18:00 | 27 | 100% |  | 2017-12-23 11:00 |  | 41h | 41h | 1,269.77 | 1,269.77 | 葛倍良 |
| 29 | 7.1 | 系统概述编写 | manual | 1h | 2017-11-19 09:00 A | 2017-11-19 10:00 A | 27 | 100% |  |  | 余倩 | 1h | 1h | 30.97 | 30.97 |  |
| 30 | 7.2 | 功能需求分类 | manual | 2h | 2017-11-24 09:00 A | 2017-11-24 11:00 A | 29 | 100% |  |  | 黄鹏羽 | 2h | 2h | 61.94 | 61.94 |  |
| 31 | 7.3 | 用例描述 | manual | 4h | 2017-11-26 09:00 A | 2017-11-26 14:00 A | 30 | 100% |  |  | 金浩楠; 葛倍良; 黄鹏羽 | 12h | 12h | 371.64 | 371.64 |  |
| 32 | 7.4 | 产品的非功能性需求 | manual | 1h | 2017-11-27 09:00 A | 2017-11-27 10:00 A | 31 | 100% |  |  | 余倩 | 1h | 1h | 30.97 | 30.97 |  |
| 33 | 7.5 | ER图、数据流图及数据字典 | manual | 4h | 2017-12-01 09:00 A | 2017-12-01 14:00 A | 32 | 100% |  |  | 葛倍良; 黄鹏羽 | 10h | 10h | 309.7 | 309.7 |  |
| 34 | 7.6 | 外部接口 | manual | 1h | 2017-12-02 09:00 A | 2017-12-02 10:00 A | 33 | 100% |  |  | 余倩 | 1h | 1h | 30.97 | 30.97 |  |
| 35 | 7.7 | 分析模型 | manual | 1h | 2017-12-03 09:00 A | 2017-12-03 10:00 A | 34 | 100% |  |  | 黄鹏羽; 金浩楠; 余倩; 周雨璐 | 4h | 4h | 123.88 | 123.88 |  |
| 36 | 7.8 | 文档编写与PPT制作 | manual | 3h | 2017-12-17 09:00 A | 2017-12-17 12:00 A | 35 | 100% |  |  | 葛倍良 [20%]; 黄鹏羽 [20%]; 金浩楠 [20%]; 余倩 [20%]; 周雨璐 [20%] | 3h | 3h | 92.91 | 92.91 |  |
| 37 | 7.9 | 软件规格说明书-修改 | manual | 4h | 2017-12-21 09:00 A | 2017-12-21 14:00 A | 36 | 100% |  |  | 葛倍良 [20%]; 黄鹏羽 [20%]; 金浩楠 [20%]; 余倩 [20%]; 周雨璐 [20%] | 5h | 5h | 154.85 | 154.85 |  |
| 38 | 7.10 | 评审 | manual | 2h | 2017-12-23 09:00 A | 2017-12-23 11:00 A | 37 | 100% |  |  | 葛倍良 [20%]; 黄鹏羽 [20%]; 金浩楠 [20%]; 余倩 [20%]; 周雨璐 [20%] | 2h | 2h | 61.94 | 61.94 |  |
| 39 | 8 | **软件需求变更文档** |  | 20.38ed | 2017-12-25 09:00 | 2018-01-14 18:00 | 38 | 100% | 2017-12-30 09:00 | 2018-01-11 11:00 |  | 15h | 15h | 464.55 | 464.55 | 葛倍良 |
| 40 | 8.1 | 需求跟踪及变更影响分析 | manual | 4h | 2018-01-04 09:00 A | 2018-01-04 14:00 A | 38 | 100% |  |  | 葛倍良 | 5h | 5h | 154.85 | 154.85 |  |
| 41 | 8.2 | 文档编写与PPT制作 | manual | 3h | 2017-12-30 09:00 A | 2017-12-30 12:00 A | 40 | 100% |  |  | 葛倍良 [20%]; 黄鹏羽 [20%]; 金浩楠 [20%]; 余倩 [20%]; 周雨璐 [20%] | 3h | 3h | 92.91 | 92.91 |  |
| 42 | 8.3 | 软件需求变更文档-修改 | manual | 4h | 2018-01-07 09:00 A | 2018-01-07 14:00 A | 41 | 100% |  |  | 葛倍良 [20%]; 黄鹏羽 [20%]; 金浩楠 [20%]; 余倩 [20%]; 周雨璐 [20%] | 5h | 5h | 154.85 | 154.85 |  |
| 43 | 8.4 | 评审 | manual | 2h | 2018-01-11 09:00 A | 2018-01-11 11:00 A | 42 | 100% |  |  | 葛倍良 [20%]; 黄鹏羽 [20%]; 金浩楠 [20%]; 余倩 [20%]; 周雨璐 [20%] | 2h | 2h | 61.94 | 61.94 |  |
| 44 | 9 | **系统设计与实现计划** |  | 6.38ed | 2017-12-18 09:00 A | 2017-12-24 18:00 | 36 | 100% |  | 2017-12-18 11:00 |  | 1.2h | 1.2h | 37.16 | 37.16 | 葛倍良 |
| 45 | 9.1 | 计划制定 | manual | 2h | 2017-12-18 09:00 A | 2017-12-18 11:00 A | 36 | 100% |  |  | 金浩楠 | 1.2h | 1.2h | 37.16 | 37.16 |  |
| 46 | 10 | **软件概要设计说明** |  | 19.38ed | 2017-12-18 09:00 | 2018-01-06 18:00 | 45 | 100% | 2017-12-25 09:00 | 2017-12-28 11:00 |  | 8h | 8h | 247.76 | 247.76 | 葛倍良 |
| 47 | 10.1 | 总体设计 | manual | 2h | 2017-12-25 09:00 A | 2017-12-25 11:00 A | 45 | 100% |  |  | 周雨璐 | 2h | 2h | 61.94 | 61.94 |  |
| 48 | 10.2 | 子系统设计 | manual | 2h | 2017-12-26 09:00 A | 2017-12-26 11:00 A | 47 | 100% |  |  | 周雨璐 | 2h | 2h | 61.94 | 61.94 |  |
| 49 | 10.3 | 系统数据结构设计 | manual | 2h | 2017-12-27 09:00 A | 2017-12-27 11:00 A | 48 | 100% |  |  | 周雨璐 | 2h | 2h | 61.94 | 61.94 |  |
| 50 | 10.4 | 系统出错处理设计 | manual | 2h | 2017-12-28 09:00 A | 2017-12-28 11:00 A | 49 | 100% |  |  | 周雨璐 | 2h | 2h | 61.94 | 61.94 |  |
| 51 | 11 | **测试计划** |  | 19.38ed | 2017-12-18 09:00 A | 2018-01-06 18:00 | 36 | 100% |  | 2017-12-23 11:00 |  | 8h | 8h | 247.76 | 247.76 | 葛倍良 |
| 52 | 11.1 | 测试策略 | manual | 1h | 2017-12-18 09:00 A | 2017-12-18 10:00 A | 36 | 100% |  |  | 金浩楠 | 1h | 1h | 30.97 | 30.97 |  |
| 53 | 11.2 | 测试方法 | manual | 2h | 2017-12-20 09:00 A | 2017-12-20 11:00 A | 52 | 100% |  |  | 金浩楠 | 2h | 2h | 61.94 | 61.94 |  |
| 54 | 11.3 | 测试组织 | manual | 1h | 2017-12-21 09:00 A | 2017-12-21 10:00 A | 53 | 100% |  |  | 金浩楠 | 1h | 1h | 30.97 | 30.97 |  |
| 55 | 11.4 | 资源需求 | manual | 2h | 2017-12-22 09:00 A | 2017-12-22 11:00 A | 54 | 100% |  |  | 金浩楠 | 2h | 2h | 61.94 | 61.94 |  |
| 56 | 11.5 | 测试过程管理 | manual | 2h | 2017-12-23 09:00 A | 2017-12-23 11:00 A | 55 | 100% |  |  | 金浩楠 | 2h | 2h | 61.94 | 61.94 |  |

| ID | WBS | Task | Type | Duration | Start | Finish | Predecessors | Complete | Remaining | Actual start | Actual finish | Resources | Work | Actual work | Cost | Actual cost | 负责人 |
| --- | --- | --- | --- | --- | --- | --- | --- | --- | --- | --- | --- | --- | --- | --- | --- | --- | --- |
| 57 | 12 | **安装部署计划** |  | 7.38ed | 2017-12-24 09:00 | 2017-12-31 18:00 | 38 | 100% |  | 2017-12-25 09:00 | 2017-12-31 11:00 |  | 6.2h | 6.2h | 192.01 | 192.01 | 葛倍良 |
| 58 | 12.1 | 支持环境 | manual | 1h | 2017-12-25 09:00 A | 2017-12-25 10:00 A | 38 | 100% |  |  |  | 余倩 | 1h | 1h | 30.97 | 30.97 |  |
| 59 | 12.2 | 数据实施计划 | manual | 2h | 2017-12-26 09:00 A | 2017-12-26 11:00 A | 58 | 100% |  |  |  | 余倩 | 2h | 2h | 61.94 | 61.94 |  |
| 60 | 12.3 | 项目进度 | manual | 2h | 2017-12-27 09:00 A | 2017-12-27 11:00 A | 59 | 100% |  |  |  | 余倩 | 2h | 2h | 61.94 | 61.94 |  |
| 61 | 12.4 | 文档编写与整理 | manual | 2h | 2017-12-31 09:00 A | 2017-12-31 11:00 A | 60 | 100% |  |  |  | 余倩 | 1.2h | 1.2h | 37.16 | 37.16 |  |
| 62 | 13 | **培训计划** |  | 13.38ed | 2017-12-24 09:00 A | 2018-01-06 18:00 | 38 | 80% | 2.67ed |  |  |  | 4.2h | 3.2h | 130.07 | 99.1 | 葛倍良 |
| 63 | 13.1 | 制定计划 | manual | 1h | 2017-12-24 09:00 A | 2017-12-24 10:00 A | 38 | 100% |  |  |  | 周雨璐 | 1h | 1h | 30.97 | 30.97 |  |
| 64 | 13.2 | 实施 | manual | 1h | 2017-12-25 09:00 A | 2017-12-25 10:00 A | 63 | 100% |  |  |  | 周雨璐 | 1h | 1h | 30.97 | 30.97 |  |
| 65 | 13.3 | 原则 | manual | 1h | 2017-12-26 09:00 A | 2017-12-26 10:00 A | 64 | 100% |  |  |  | 周雨璐 | 1h | 1h | 30.97 | 30.97 |  |
| 66 | 13.4 | 文档编写与整理 | manual | 2h | 2017-12-28 09:00 A | 2017-12-28 11:00 | 65 | 50% | 1h |  |  | 周雨璐 | 1.2h | 0.2h | 37.16 | 6.19 |  |
| 67 | 14 | **系统维护计划** |  | 6.38ed | 2017-12-31 09:00 | 2018-01-06 18:00 | 38 | 100% |  | 2018-01-04 09:00 | 2018-01-04 10:00 |  | 2h | 2h | 61.94 | 61.94 | 葛倍良 |
| 68 | 14.1 | 软件维护 | manual | 1h | 2018-01-04 09:00 A | 2018-01-04 10:00 A | 38 | 100% |  |  |  | 黄鹏羽 | 1h | 1h | 30.97 | 30.97 |  |
| 69 | 14.2 | 文档编写与整理 | manual | 1h | 2018-01-04 09:00 A | 2018-01-04 10:00 A | 68 | 100% |  |  |  | 黄鹏羽 | 1h | 1h | 30.97 | 30.97 |  |
| 70 | 15 | **项目总结报告** |  | 13.38ed | 2018-01-14 09:00 A | 2018-01-27 18:00 | 69, 65, 61, 55, 43, 50, 56, 21 | 50% | 6.69ed |  |  |  | 12h | 6h | 371.64 | 185.82 | 葛倍良 |
| 71 | 15.1 | 文档编写与PPT制作 | manual | 4h | 2018-01-14 09:00 A | 2018-01-14 14:00 A | 69 | 100% |  |  |  | 葛倍良; 黄鹏羽; 金浩楠; 余倩; 周雨璐 | 5h | 5h | 154.85 | 154.85 |  |
| 72 | 15.2 | 经验总结 | manual | 1h | 2018-01-15 09:00 A | 2018-01-15 10:00 A | 71 | 100% |  |  |  | 葛倍良; 黄鹏羽; 金浩楠; 余倩; 周雨璐 | 1h | 1h | 30.97 | 30.97 |  |
| 73 | 15.3 | 答辩与评价 | milestone, manual | 5h | 2018-01-18 09:00 | 2018-01-18 15:00 | 72 |  |  |  |  | 葛倍良 [20%]; 黄鹏羽 [20%]; 金浩楠 [20%]; 余倩 [20%]; 周雨璐 [20%] | 6h |  | 185.82 |  |  |
