Schedule from MS Project, 2017-10-11 to 2018-01-17, costs in ¥, A marks actual dates.
Microsoft

## Calendars

- 标准: Mon-Fri 08:00-12:00, 13:00-17:00; Sat-Sun off.

## Resources

| Resource | Rate |
| --- | --- |
| 葛倍良 | 30.97 |
| 黄鹏羽 | 30.97 |
| 金浩楠 | 30.97 |
| 余倩 | 30.97 |
| 周雨璐 | 30.97 |

## Schedule

| ID | WBS | Task | Type | Duration | Start | Finish | Predecessors | Complete | Remaining | Actual start | Actual finish | Total slack | Constraint | Resources | Work | Actual work | Cost | Actual cost | 负责人 |
| --- | --- | --- | --- | --- | --- | --- | --- | --- | --- | --- | --- | --- | --- | --- | --- | --- | --- | --- | --- |
| 1 | 1 | **项目准备阶段** |  | 2ed | 2017-10-11 09:00 A | 2017-10-13 09:00 |  | 100% |  |  | 2017-10-12 11:00 |  |  |  | 18h | 18h | 557.46 | 557.46 | 葛倍良 |
| 2 | 1.1 | 项目任务确定 | manual | 0.04ed | 2017-10-11 09:00 A | 2017-10-11 10:00 A |  | 100% |  |  |  |  |  | 葛倍良 | 1h | 1h | 30.97 | 30.97 |  |
| 3 | 1.2 | 准备项目所需工具 | manual | 0.46ed | 2017-10-11 09:00 A | 2017-10-11 20:00 A | 2 | 100% |  |  |  |  |  | 葛倍良 [20%]; 黄鹏羽 [20%]; 金浩楠 [20%]; 余倩 [20%]; 周雨璐 [20%] | 6h | 6h | 185.82 | 185.82 |  |
| 4 | 1.3 | 第二周小组会议 | manual | 0.12d | 2017-10-12 09:00 A | 2017-10-12 10:00 A | 3 | 100% |  |  |  |  |  | 葛倍良 [20%]; 黄鹏羽 [20%]; 金浩楠 [20%]; 余倩 [20%]; 周雨璐 [20%] | 1h | 1h | 30.97 | 30.97 |  |
| 5 | 1.4 | 文档书写与PPT制作 | manual | 0.08ed | 2017-10-12 09:00 A | 2017-10-12 11:00 A | 4 | 100% |  |  |  |  |  | 葛倍良 [20%]; 黄鹏羽 [20%]; 金浩楠 [20%]; 余倩 [20%]; 周雨璐 [20%] | 10h | 10h | 309.7 | 309.7 |  |
| 6 | 2 | **项目计划阶段** |  | 8d | 2017-10-13 09:00 A | 2017-10-24 18:00 | 5 | 100% |  |  | 2017-10-24 10:00 |  |  |  | 28h | 28h | 867.16 | 867.16 | 葛倍良 |
| 7 | 2.1 | 编写可行性分析报告 | manual | 0.25d | 2017-10-13 09:00 A | 2017-10-14 08:02 A | 5 | 100% |  |  |  |  | finish no earlier than 2017-10-13 18:00 | 葛倍良; 金浩楠; 余倩; 周雨璐 | 8h | 8h | 247.76 | 247.76 |  |
| 8 | 2.2 | 第三周小组会议 | manual | 0.12d | 2017-10-19 09:00 A | 2017-10-19 10:00 A | 7 | 100% |  |  |  |  |  | 葛倍良 [20%]; 黄鹏羽 [20%]; 金浩楠 [20%]; 余倩 [20%]; 周雨璐 [20%] | 1h | 1h | 30.97 | 30.97 |  |
| 9 | 2.3 | OBS | manual | 0.25d | 2017-10-20 09:00 A | 2017-10-20 11:00 A | 8 | 100% |  |  |  |  | start no earlier than 2017-10-20 09:00 | 黄鹏羽 | 2h | 2h | 61.94 | 61.94 |  |
| 10 | 2.4 | WBS | manual | 0.25d | 2017-10-20 09:00 A | 2017-10-20 11:00 A | 9 | 100% |  |  |  |  |  | 黄鹏羽 | 2h | 2h | 61.94 | 61.94 |  |
| 11 | 2.5 | 甘特图 | manual | 0.5d | 2017-10-20 09:00 A | 2017-10-20 14:00 A | 10 | 100% |  |  |  |  |  | 黄鹏羽 | 4h | 4h | 123.88 | 123.88 |  |
| 12 | 2.6 | 编写项目总体计划书 | manual | 1.25d | 2017-10-23 08:00 A | 2017-10-24 17:00 A | 11 | 100% |  |  |  |  | finish no earlier than 2017-10-24 18:00 | 葛倍良 [20%]; 黄鹏羽 [20%]; 金浩楠 [20%]; 余倩 [20%]; 周雨璐 [20%] | 10h | 10h | 309.7 | 309.7 |  |
| 13 | 2.7 | 第四周小组会议 | manual | 0.12d | 2017-10-23 09:00 A | 2017-10-23 10:00 A | 12 | 100% |  |  |  |  |  | 葛倍良 [20%]; 黄鹏羽 [20%]; 金浩楠 [20%]; 余倩 [20%]; 周雨璐 [20%] | 1h | 1h | 30.97 | 30.97 |  |
| 14 | 3 | **制定需求工程项目计划** |  | 55.38ed | 2017-10-25 09:00 A | 2017-12-19 18:00 | 13 | 5% | 52.42ed |  |  |  |  |  | 79.85h | 5h | 2,472.84 | 154.85 | 葛倍良 |
| 15 | 3.1 | **需求开发** |  | 41.38ed | 2017-10-25 09:00 | 2017-12-05 18:00 |  | 9% | 37.7ed | 2017-10-29 09:00 |  |  |  |  | 49.85h | 5h | 1,543.74 | 154.85 |  |
| 16 | 3.1.1 | **需求获取** |  | 8.38ed | 2017-10-29 09:00 | 2017-11-06 18:00 |  | 33% | 5.58ed | 2017-11-02 09:00 |  |  |  |  | 12.85h | 5h | 397.85 | 154.85 | 黄鹏羽 |
| 17 | 3.1.1.1 | 第五周小组会议 | manual | 1h | 2017-11-02 09:00 A | 2017-11-02 10:00 A | 13 | 100% |  |  |  |  |  | 葛倍良 [20%]; 黄鹏羽 [20%]; 金浩楠 [20%]; 余倩 [20%]; 周雨璐 [20%] | 1h | 1h | 30.97 | 30.97 |  |
| 18 | 3.1.1.2 | 确定需求开发过程 | manual | 1h | 2017-11-02 09:00 A | 2017-11-02 10:00 A | 17 | 100% |  |  |  |  | start no earlier than 2017-11-02 09:00 | 葛倍良 | 1h | 1h | 30.97 | 30.97 |  |
| 19 | 3.1.1.3 | 编写项目视图与范围 |  | 1h | 2017-11-03 09:00 A | 2017-11-03 10:00 A | 18 | 100% |  |  |  |  |  | 金浩楠 [50%]; 周雨璐 [50%] | 2h | 2h | 61.94 | 61.94 |  |
| 20 | 3.1.1.4 | 用户群分类 | manual | 1h | 2017-11-03 09:00 A | 2017-11-03 10:00 A | 19 | 100% |  |  |  |  | start no earlier than 2017-11-03 09:00 | 黄鹏羽 | 1h | 1h | 30.97 | 30.97 |  |
| 21 | 3.1.1.5 | 选择产品代表 | manual | 1h | 2017-11-03 10:02 | 2017-11-03 11:02 | 20 |  |  |  |  |  | start no earlier than 2017-11-04 09:00 | 金浩楠 | 0.96h |  | 29.78 |  |  |
| 22 | 3.1.1.6 | 建立核心队伍 | manual | 1h | 2017-11-03 11:04 | 2017-11-03 13:04 | 21 |  |  |  |  |  |  | 葛倍良 | 1h |  | 30.97 |  |  |
| 23 | 3.1.1.7 | 确定使用实例 | manual | 1h | 2017-11-03 13:07 | 2017-11-03 14:07 | 22 |  |  |  |  |  |  | 余倩 | 0.96h |  | 29.78 |  |  |
| 24 | 3.1.1.8 | 召开应用程序开发联系会议 | manual | 1h | 2017-11-03 14:09 | 2017-11-03 15:09 | 23 |  |  |  |  |  |  | 葛倍良 | 0.96h |  | 29.78 |  |  |
| 25 | 3.1.1.9 | 分析用户工作流程 | manual | 1h | 2017-11-03 15:09 | 2017-11-03 16:09 | 24 |  |  |  |  |  |  | 黄鹏羽 | 1h |  | 30.97 |  |  |
| 26 | 3.1.1.10 | 确定质量属性 | manual | 1h | 2017-11-03 16:09 | 2017-11-06 08:09 | 25 |  |  |  |  |  |  | 周雨璐 | 1h |  | 30.97 |  |  |
| 27 | 3.1.1.11 | 检查问题报告 | manual | 1h | 2017-11-06 09:00 | 2017-11-06 10:00 | 26 |  |  |  |  |  |  | 余倩 | 0.96h |  | 29.78 |  |  |
| 28 | 3.1.1.12 | 需求重用 |  | 1h | 2017-11-06 10:00 | 2017-11-06 11:00 | 27 |  |  |  |  | 0d |  | 金浩楠 | 1h |  | 30.97 |  |  |

| ID | WBS | Task | Type | Duration | Start | Finish | Predecessors | Total slack | Free slack | Constraint | Resources | Work | Cost | 负责人 |
| --- | --- | --- | --- | --- | --- | --- | --- | --- | --- | --- | --- | --- | --- | --- |
| 29 | 3.1.2 | **需求分析** |  | 7ed | 2017-11-06 09:00 | 2017-11-13 09:00 | 28 |  |  |  |  | 11h | 340.67 | 金浩楠 |
| 30 | 3.1.2.1 | 绘制关联图 | manual | 1h | 2017-11-06 11:00 | 2017-11-06 12:00 | 28 |  |  |  | 金浩楠 | 1h | 30.97 |  |
| 31 | 3.1.2.2 | 创建开发原型 |  | 1h | 2017-11-06 13:00 | 2017-11-06 14:00 | 30 | 4.12d | 0d |  | 葛倍良 | 1h | 30.97 |  |
| 32 | 3.1.2.3 | 确定需求优先级 |  | 1h | 2017-11-06 14:00 | 2017-11-06 15:00 | 31 | 4.12d | 1.38d |  | 余倩; 周雨璐 | 2h | 61.94 |  |
| 33 | 3.1.2.4 | 为需求建立模型 |  | 1h | 2017-11-08 09:00 | 2017-11-08 10:00 | 32 | 2.75d | 0.88d | start no earlier than 2017-11-08 09:00 | 黄鹏羽; 金浩楠 | 2h | 61.94 |  |
| 34 | 3.1.2.5 | 编写数据字典 |  | 1h | 2017-11-09 09:00 | 2017-11-09 10:00 | 33 | 1.88d | 0d | start no earlier than 2017-11-09 09:00 | 葛倍良; 黄鹏羽 | 2h | 61.94 |  |
| 35 | 3.1.2.6 | 第六周小组会议 | manual | 1h | 2017-11-09 10:00 | 2017-11-09 11:00 | 34 |  |  |  | 葛倍良 [20%]; 黄鹏羽 [20%]; 金浩楠 [20%]; 余倩 [20%]; 周雨璐 [20%] | 1h | 30.97 |  |
| 36 | 3.1.2.7 | 应用质量功能调配 |  | 1h | 2017-11-10 09:00 | 2017-11-10 10:00 | 35 | 1.12d | 0.88d | start no earlier than 2017-11-10 09:00 | 余倩; 周雨璐 | 2h | 61.94 |  |
| 37 | 3.1.3 | **需求规格说明** |  | 14.38ed | 2017-11-13 09:00 | 2017-11-27 18:00 | 36 |  |  |  |  | 11h | 340.67 | 周雨璐 |
| 38 | 3.1.3.1 | 采用软件需求规格说明模板 |  | 2h | 2017-11-13 09:00 | 2017-11-13 11:00 | 36 | 11.12d | 0d |  | 葛倍良 | 2h | 61.94 |  |
| 39 | 3.1.3.2 | 第七周小组会议 | manual | 1h | 2017-11-13 11:00 | 2017-11-13 12:00 | 38 |  |  |  | 葛倍良 [20%]; 黄鹏羽 [20%]; 金浩楠 [20%]; 余倩 [20%]; 周雨璐 [20%] | 1h | 30.97 |  |
| 40 | 3.1.3.3 | 指明需求来源 |  | 1h | 2017-11-15 09:00 | 2017-11-15 10:00 | 39 | 9.5d | 1.88d | start no earlier than 2017-11-15 09:00 | 黄鹏羽 | 1h | 30.97 |  |
| 41 | 3.1.3.4 | 记录业务规范 |  | 2h | 2017-11-17 09:00 | 2017-11-17 11:00 | 40 | 7.62d | 0.75d | start no earlier than 2017-11-17 09:00 | 周雨璐 | 2h | 61.94 |  |
| 42 | 3.1.3.5 | 为每一需求注上标号 |  | 1h | 2017-11-20 09:00 | 2017-11-20 10:00 | 41 | 6.88d | 1.88d | start no earlier than 2017-11-20 09:00 | 余倩 | 1h | 30.97 |  |
| 43 | 3.1.3.6 | 创建需求跟踪能力矩阵 |  | 3h | 2017-11-22 09:00 | 2017-11-22 12:00 | 42 | 5d | 0d | start no earlier than 2017-11-22 09:00 | 金浩楠 | 3h | 92.91 |  |
| 44 | 3.1.3.7 | 第八周小组会议 | manual | 1h | 2017-11-22 13:00 | 2017-11-22 14:00 | 43 |  |  |  | 葛倍良 [20%]; 黄鹏羽 [20%]; 金浩楠 [20%]; 余倩 [20%]; 周雨璐 [20%] | 1h | 30.97 |  |
| 45 | 3.1.4 | **需求规格审核** |  | 6d | 2017-11-27 09:00 | 2017-12-03 18:00 | 44 |  |  |  |  | 15h | 464.55 | 余倩 |
| 46 | 3.1.4.1 | 审查需求文档 |  | 2h | 2017-11-27 09:00 | 2017-11-27 11:00 | 44 | 6.12d | 0.75d |  | 葛倍良 | 2h | 61.94 |  |
| 47 | 3.1.4.2 | 编写测试用例 |  | 6h | 2017-11-28 09:00 | 2017-11-28 16:00 | 46 | 5.38d | 0.25d | start no earlier than 2017-11-28 09:00 | 葛倍良 [20%]; 黄鹏羽 [20%]; 金浩楠 [20%]; 余倩 [20%]; 周雨璐 [20%] | 6h | 185.82 |  |
| 48 | 3.1.4.3 | 编写用户手册 |  | 4h | 2017-11-29 09:00 | 2017-11-29 14:00 | 47 | 5.12d | 0d | start no earlier than 2017-11-29 09:00 | 葛倍良 [20%]; 黄鹏羽 [20%]; 金浩楠 [20%]; 余倩 [20%]; 周雨璐 [20%] | 4h | 123.88 |  |
| 49 | 3.1.4.4 | 第九周小组会议 | manual | 1h | 2017-11-29 14:00 | 2017-11-29 15:00 | 48 |  |  |  | 葛倍良 [20%]; 黄鹏羽 [20%]; 金浩楠 [20%]; 余倩 [20%]; 周雨璐 [20%] | 1h | 30.97 |  |
| 50 | 3.1.4.5 | 确定合格的标准 |  | 2h | 2017-11-30 09:00 | 2017-11-30 11:00 | 49 | 4.75d | 1.75d | start no earlier than 2017-11-30 09:00 | 葛倍良 [20%]; 黄鹏羽 [20%]; 金浩楠 [20%]; 余倩 [20%]; 周雨璐 [20%] | 2h | 61.94 |  |
| 51 | 3.2 | **需求管理** |  | 13.38ed | 2017-12-04 09:00 | 2017-12-17 18:00 | 50 |  |  |  |  | 30h | 929.1 | 葛倍良 |
| 52 | 3.2.1 | 确定变更控制过程 |  | 2h | 2017-12-04 09:00 | 2017-12-04 11:00 | 50 | 4.62d | 0d |  | 葛倍良 | 2h | 61.94 |  |
| 53 | 3.2.2 | 建立变更控制委员会 |  | 2h | 2017-12-04 11:00 | 2017-12-04 14:00 | 52 | 4.62d | 0.5d |  | 葛倍良 [20%]; 黄鹏羽 [20%]; 金浩楠 [20%]; 余倩 [20%]; 周雨璐 [20%] | 2h | 61.94 |  |
| 54 | 3.2.3 | 进行变更影响分析 |  | 4h | 2017-12-05 09:00 | 2017-12-05 14:00 | 53 | 4.12d | 0.5d | start no earlier than 2017-12-05 09:00 | 葛倍良 [20%]; 黄鹏羽 [20%]; 金浩楠 [20%]; 余倩 [20%]; 周雨璐 [20%] | 4h | 123.88 |  |
| 55 | 3.2.4 | 跟踪每一项变更 |  | 2h | 2017-12-06 09:00 | 2017-12-06 11:00 | 54 | 3.62d | 0.75d | start no earlier than 2017-12-06 09:00 | 金浩楠 | 2h | 61.94 |  |
| 56 | 3.2.5 | 第十周小组会议 | manual | 1h | 2017-12-07 09:00 | 2017-12-07 10:00 | 55 |  |  |  | 葛倍良 [20%]; 黄鹏羽 [20%]; 金浩楠 [20%]; 余倩 [20%]; 周雨璐 [20%] | 1h | 30.97 |  |
| 57 | 3.2.6 | 编写需求文档的标准版本和控制版本 |  | 6h | 2017-12-07 10:00 | 2017-12-07 17:00 | 56 | 2.88d | 0.12d | start no earlier than 2017-12-07 09:00 | 葛倍良 [20%]; 黄鹏羽 [20%]; 金浩楠 [20%]; 余倩 [20%]; 周雨璐 [20%] | 6h | 185.82 |  |
| 58 | 3.2.7 | 维护变更历史记录 |  | 4h | 2017-12-08 09:00 | 2017-12-08 14:00 | 57 | 2.75d | 0.5d | start no earlier than 2017-12-08 09:00 | 周雨璐 | 4h | 123.88 |  |
| 59 | 3.2.8 | 跟踪需求状态 |  | 4h | 2017-12-11 09:00 | 2017-12-11 14:00 | 58 | 2.25d | 0.5d | start no earlier than 2017-12-11 09:00 | 余倩 | 4h | 123.88 |  |
| 60 | 3.2.9 | 衡量需求稳定性 |  | 2h | 2017-12-12 09:00 | 2017-12-12 11:00 | 59 | 1.75d |  | start no earlier than 2017-12-12 09:00 | 金浩楠 | 2h | 61.94 |  |
| 61 | 3.2.10 | 第十一周小组会议 | manual | 1h | 2017-12-14 09:00 | 2017-12-14 10:00 | 60 |  |  |  | 葛倍良 [20%]; 黄鹏羽 [20%]; 金浩楠 [20%]; 余倩 [20%]; 周雨璐 [20%] | 1h | 30.97 |  |
| 62 | 3.2.11 | 使用需求管理工具 |  | 2h | 2017-12-14 10:00 | 2017-12-14 12:00 | 61 | 0d |  | start no earlier than 2017-12-14 09:00 | 葛倍良 | 2h | 61.94 |  |

| ID | WBS | Task | Type | Duration | Start | Finish | Predecessors | Resources | Work | Cost | 负责人 |
| --- | --- | --- | --- | --- | --- | --- | --- | --- | --- | --- | --- |
| 63 | 4 | **项目总结报告** |  | 16ed | 2018-01-01 09:00 | 2018-01-17 09:00 | 62 |  | 19h | 588.43 | 葛倍良 |
| 64 | 4.1 | 文档编写与PPT制作 | manual | 10h | 2017-12-14 13:00 | 2017-12-15 15:00 | 62 | 葛倍良 [20%]; 黄鹏羽 [20%]; 金浩楠 [20%]; 余倩 [20%]; 周雨璐 [20%] | 10h | 309.7 |  |
| 65 | 4.2 | 第十四周小组会议 | manual | 1h | 2018-01-04 09:00 | 2018-01-04 10:00 | 64 | 葛倍良 [20%]; 黄鹏羽 [20%]; 金浩楠 [20%]; 余倩 [20%]; 周雨璐 [20%] | 1h | 30.97 |  |
| 66 | 4.3 | 答辩与评价 | manual | 5h | 2018-01-08 09:00 | 2018-01-08 15:00 | 65 | 葛倍良 [20%]; 黄鹏羽 [20%]; 金浩楠 [20%]; 余倩 [20%]; 周雨璐 [20%] | 5h | 154.85 |  |
| 67 | 4.4 | 第十五周小组会议 | manual | 1h | 2018-01-11 09:00 | 2018-01-11 10:00 | 66 | 葛倍良 [20%]; 黄鹏羽 [20%]; 金浩楠 [20%]; 余倩 [20%]; 周雨璐 [20%] | 1h | 30.97 |  |
| 68 | 4.5 | 经验总结 | manual | 2h | 2018-01-12 09:00 | 2018-01-12 11:00 | 67 | 葛倍良 [20%]; 黄鹏羽 [20%]; 金浩楠 [20%]; 余倩 [20%]; 周雨璐 [20%] | 2h | 61.94 |  |
