Schedule from MS Project, 2017-10-11 to 2018-01-17, costs in ¥, A marks actual dates.
Microsoft

## Calendars

- 标准: Mon-Fri 08:00-12:00, 13:00-17:00; Sat-Sun off. Exceptions (off unless hours are given): 2017-10-13 to 2018-01-17 08:00-12:00, 13:00-17:00 (周六加班, recurring), 2017-10-13 to 2018-01-17 08:00-12:00, 13:00-17:00 (周天加班).

## Resources

| Resource | Rate |
| --- | --- |
| 葛倍良 | 30.97 |
| 黄鹏羽 | 30.97 |
| 金浩楠 | 30.97 |
| 余倩 | 30.97 |
| 周雨璐 | 30.97 |

## Schedule

| ID | WBS | Task | Type | Duration | Start | Finish | Predecessors | Complete | Remaining | Actual start | Actual finish | Total slack | Constraint | Resources | Work | Actual work | Cost | Actual cost | 负责人 |
| --- | --- | --- | --- | --- | --- | --- | --- | --- | --- | --- | --- | --- | --- | --- | --- | --- | --- | --- | --- |
| 1 | 1 | **项目准备阶段** |  | 4.38ed | 2017-10-11 09:00 A | 2017-10-15 18:00 |  | 100% |  |  | 2017-10-13 14:00 |  |  |  | 28h | 28h | 867.16 | 867.16 | 葛倍良 |
| 2 | 1.1 | 项目任务确定 | manual | 0.04ed | 2017-10-11 09:00 A | 2017-10-11 10:00 A |  | 100% |  |  |  |  |  | 葛倍良 | 1h | 1h | 30.97 | 30.97 |  |
| 3 | 1.2 | 准备项目所需工具 | manual | 0.46ed | 2017-10-11 09:00 A | 2017-10-11 20:00 A | 2 | 100% |  |  |  |  |  | 葛倍良 [20%]; 黄鹏羽 [20%]; 金浩楠 [20%]; 余倩 [20%]; 周雨璐 [20%] | 6h | 6h | 185.82 | 185.82 |  |
| 4 | 1.3 | 第二周小组会议 | manual | 0.12d | 2017-10-12 09:00 A | 2017-10-12 10:00 A | 3 | 100% |  |  |  |  |  | 葛倍良 [20%]; 黄鹏羽 [20%]; 金浩楠 [20%]; 余倩 [20%]; 周雨璐 [20%] | 1h | 1h | 30.97 | 30.97 |  |
| 5 | 1.4 | 文档书写与PPT制作 | manual | 0.08ed | 2017-10-12 09:00 A | 2017-10-12 11:00 A | 4 | 100% |  |  |  |  |  | 葛倍良 [20%]; 黄鹏羽 [20%]; 金浩楠 [20%]; 余倩 [20%]; 周雨璐 [20%] | 10h | 10h | 309.7 | 309.7 |  |
| 6 | 1.5 | 可行性分析报告 | milestone, manual | 0.25d | 2017-10-13 09:00 A | 2017-10-14 08:02 A | 5 | 100% |  |  |  |  | finish no earlier than 2017-10-13 18:00 | 葛倍良; 金浩楠; 余倩; 周雨璐 | 8h | 8h | 247.76 | 247.76 |  |
| 7 | 1.6 | 项目章程 | milestone, manual | 2h | 2017-10-13 11:00 A | 2017-10-13 14:00 A | 6 | 100% |  |  |  |  |  | 余倩 | 2h | 2h | 61.94 | 61.94 |  |
| 8 | 2 | **项目计划阶段** |  | 7d | 2017-10-16 09:00 | 2017-10-22 18:00 | 7 | 100% |  | 2017-10-19 09:00 | 2017-10-21 10:00 |  |  |  | 14h | 14h | 433.58 | 433.58 | 葛倍良 |
| 9 | 2.1 | 第三周小组会议 | manual | 0.12d | 2017-10-19 09:00 A | 2017-10-19 10:00 A | 6 | 100% |  |  |  |  |  | 葛倍良 [20%]; 黄鹏羽 [20%]; 金浩楠 [20%]; 余倩 [20%]; 周雨璐 [20%] | 1h | 1h | 30.97 | 30.97 |  |
| 10 | 2.2 | OBS | manual | 0.25d | 2017-10-20 09:00 A | 2017-10-20 11:00 A | 9 | 100% |  |  |  |  | start no earlier than 2017-10-20 09:00 | 黄鹏羽 | 2h | 2h | 61.94 | 61.94 |  |
| 11 | 2.3 | WBS | manual | 0.25d | 2017-10-20 09:00 A | 2017-10-20 11:00 A | 10 | 100% |  |  |  |  |  | 黄鹏羽 | 2h | 2h | 61.94 | 61.94 |  |
| 12 | 2.4 | 甘特图 | manual | 0.5d | 2017-10-20 09:00 A | 2017-10-20 14:00 A | 11 | 100% |  |  |  |  |  | 黄鹏羽 | 4h | 4h | 123.88 | 123.88 |  |
| 13 | 2.5 | 项目总体计划书 | milestone, manual | 4h | 2017-10-20 09:00 A | 2017-10-20 14:00 A | 12 | 100% |  |  |  |  | start no earlier than 2017-10-20 09:00 | 葛倍良 [20%]; 黄鹏羽 [20%]; 金浩楠 [20%]; 余倩 [20%]; 周雨璐 [20%] | 4h | 4h | 123.88 | 123.88 |  |
| 14 | 2.6 | 第四周小组会议 | manual | 1h | 2017-10-21 09:00 A | 2017-10-21 10:00 A | 13 | 100% |  |  |  |  |  | 葛倍良 [20%]; 黄鹏羽 [20%]; 金浩楠 [20%]; 余倩 [20%]; 周雨璐 [20%] | 1h | 1h | 30.97 | 30.97 |  |
| 15 | 3 | **制定需求工程项目计划** |  | 55.38ed | 2017-10-25 09:00 A | 2017-12-19 18:00 | 14 | 32% | 37.77ed |  |  |  |  |  | 147.35h | 75.42h | 4,563.31 | 2,335.85 | 葛倍良 |
| 16 | 3.1 | **需求开发** |  | 46.38ed | 2017-10-25 09:00 | 2017-12-10 18:00 |  | 49% | 23.8ed | 2017-10-29 09:00 |  |  |  |  | 117.35h | 75.42h | 3,634.21 | 2,335.85 |  |
| 17 | 3.1.1 | **需求获取** |  | 42.38ed | 2017-10-29 09:00 | 2017-12-10 18:00 |  | 76% | 10.38ed | 2017-11-02 09:00 |  |  |  |  | 77.35h | 63.42h | 2,395.41 | 1,964.21 | 葛倍良 |
| 18 | 3.1.1.1 | 第五周小组会议 | manual | 1h | 2017-11-02 09:00 A | 2017-11-02 10:00 A | 14 | 100% |  |  |  |  |  | 葛倍良 [20%]; 黄鹏羽 [20%]; 金浩楠 [20%]; 余倩 [20%]; 周雨璐 [20%] | 1h | 1h | 30.97 | 30.97 |  |
| 19 | 3.1.1.2 | 确定需求开发过程 | manual | 1h | 2017-11-02 09:00 A | 2017-11-02 10:00 A | 18 | 100% |  |  |  |  | start no earlier than 2017-11-02 09:00 | 葛倍良 | 1h | 1h | 30.97 | 30.97 |  |
| 20 | 3.1.1.3 | 编写项目视图与范围 |  | 1h | 2017-11-03 09:00 A | 2017-11-03 10:00 A | 19 | 100% |  |  |  |  |  | 金浩楠 [50%]; 周雨璐 [50%] | 2h | 2h | 61.94 | 61.94 |  |
| 21 | 3.1.1.4 | 用户群分类 | manual | 1h | 2017-11-03 09:00 A | 2017-11-03 10:00 A | 20 | 100% |  |  |  |  | start no earlier than 2017-11-03 09:00 | 黄鹏羽 | 1h | 1h | 30.97 | 30.97 |  |
| 22 | 3.1.1.5 | 需求工程项目评审 | manual | 1h | 2017-11-03 09:00 A | 2017-11-03 10:00 A | 21 | 100% |  |  |  |  |  | 葛倍良; 黄鹏羽; 金浩楠; 余倩; 周雨璐 | 5h | 5h | 154.85 | 154.85 |  |
| 23 | 3.1.1.6 | 项目发起人访谈 | manual | 1h | 2017-11-05 09:00 A | 2017-11-05 10:00 A | 22 | 100% |  |  |  |  |  | 葛倍良; 黄鹏羽; 金浩楠; 周雨璐 | 4h | 4h | 123.88 | 123.88 |  |
| 24 | 3.1.1.7 | 第六周小组会议 | manual | 1h | 2017-11-08 09:00 A | 2017-11-08 10:00 A | 23 | 100% |  |  |  |  |  | 葛倍良; 黄鹏羽; 金浩楠; 周雨璐 | 4h | 4h | 123.88 | 123.88 |  |
| 25 | 3.1.1.8 | 项目发起人二次访谈 | manual | 1h | 2017-11-09 09:00 A | 2017-11-09 10:00 A | 24 | 100% |  |  |  |  |  | 葛倍良; 黄鹏羽; 金浩楠; 余倩; 周雨璐 | 5h | 5h | 154.85 | 154.85 |  |
| 26 | 3.1.1.9 | 选择产品代表 | manual | 1h | 2017-11-12 09:00 A | 2017-11-12 10:00 A | 25 | 100% |  |  |  |  | start no earlier than 2017-11-12 09:00 | 金浩楠 | 0.96h | 0.96h | 29.78 | 29.78 |  |
| 27 | 3.1.1.10 | 第七周小组会议 | manual | 1h | 2017-11-15 09:00 A | 2017-11-15 10:00 A | 26 | 100% |  |  |  |  |  | 葛倍良; 黄鹏羽; 金浩楠; 余倩; 周雨璐 | 5h | 5h | 154.85 | 154.85 |  |
| 28 | 3.1.1.11 | 教师用户代表访谈 | manual | 1h | 2017-11-16 09:00 A | 2017-11-16 10:00 A | 27 | 100% |  |  |  |  |  | 葛倍良; 黄鹏羽; 金浩楠; 余倩; 周雨璐 | 5h | 5h | 154.85 | 154.85 |  |
| 29 | 3.1.1.12 | 建立核心队伍 | manual | 1h | 2017-11-17 09:00 A | 2017-11-17 10:00 A | 28 | 100% |  |  |  |  |  | 葛倍良 | 1h | 1h | 30.97 | 30.97 |  |
| 30 | 3.1.1.13 | 学生用户代表访谈 | manual | 1h | 2017-11-17 10:00 A | 2017-11-17 11:00 A | 29 | 100% |  |  |  |  |  | 葛倍良; 黄鹏羽; 金浩楠; 余倩; 周雨璐 | 5h | 5h | 154.85 | 154.85 |  |
| 31 | 3.1.1.14 | 游客用户代表访谈 | manual | 1h | 2017-11-17 11:00 A | 2017-11-17 12:00 A | 30 | 100% |  |  |  |  |  | 葛倍良; 黄鹏羽; 金浩楠; 余倩; 周雨璐 | 5h | 5h | 154.85 | 154.85 |  |
| 32 | 3.1.1.15 | 第八周小组会议 | manual | 1h | 2017-11-22 09:00 A | 2017-11-22 10:00 A | 31 | 100% |  |  |  |  |  | 葛倍良; 黄鹏羽; 金浩楠; 余倩; 周雨璐 | 5h | 5h | 154.85 | 154.85 |  |
| 33 | 3.1.1.16 | 教师用户代表二次访谈 | manual | 0.5h | 2017-11-23 09:00 A | 2017-11-23 09:30 A | 32 | 100% |  |  |  |  |  | 葛倍良; 黄鹏羽; 金浩楠; 余倩; 周雨璐 | 2.5h | 2.5h | 77.42 | 77.42 |  |
| 34 | 3.1.1.17 | 学生用户代表二次访谈 | manual | 1h | 2017-11-25 09:00 A | 2017-11-25 10:00 A | 33 | 100% |  |  |  |  |  | 葛倍良; 黄鹏羽; 金浩楠; 余倩; 周雨璐 | 5h | 5h | 154.85 | 154.85 |  |
| 35 | 3.1.1.18 | 确定使用实例 | manual | 1h | 2017-11-25 09:00 A | 2017-11-25 10:00 A | 34 | 100% |  |  |  |  |  | 余倩 | 0.96h | 0.96h | 29.78 | 29.78 |  |
| 36 | 3.1.1.19 | 第八周第二次小组会议 | manual | 1h | 2017-11-26 09:00 A | 2017-11-26 10:00 A | 35 | 100% |  |  |  |  |  | 葛倍良; 黄鹏羽; 金浩楠; 余倩; 周雨璐 | 5h | 5h | 154.85 | 154.85 |  |
| 37 | 3.1.1.20 | 召开应用程序开发联系会议 | manual | 1h | 2017-11-30 09:00 | 2017-11-30 10:00 | 36 |  |  |  |  |  |  | 葛倍良; 黄鹏羽; 金浩楠; 余倩; 周雨璐 | 4.96h |  | 153.66 |  |  |
| 38 | 3.1.1.21 | 分析用户工作流程 | manual | 1h | 2017-11-30 09:00 | 2017-11-30 10:00 | 37 |  |  |  |  |  |  | 黄鹏羽 | 1h |  | 30.97 |  |  |
| 39 | 3.1.1.22 | 确定质量属性 | manual | 1h | 2017-11-30 10:00 | 2017-11-30 11:00 | 38 |  |  |  |  |  |  | 周雨璐 | 1h |  | 30.97 |  |  |
| 40 | 3.1.1.23 | 第九周小组会议 | manual | 1h | 2017-11-30 11:00 | 2017-11-30 12:00 | 39 |  |  |  |  |  |  | 葛倍良; 黄鹏羽; 金浩楠; 余倩; 周雨璐 | 5h |  | 154.85 |  |  |
| 41 | 3.1.1.24 | 检查问题报告 | manual | 1h | 2017-12-01 09:00 | 2017-12-01 10:00 | 40 |  |  |  |  |  |  | 余倩 | 0.96h |  | 29.78 |  |  |
| 42 | 3.1.1.25 | 需求重用 |  | 1h | 2017-12-01 10:00 | 2017-12-01 11:00 | 41 |  |  |  |  | 46.75d |  | 金浩楠 | 1h |  | 30.97 |  |  |

| ID | WBS | Task | Type | Duration | Start | Finish | Predecessors | Complete | Remaining | Actual start | Total slack | Free slack | Constraint | Resources | Work | Actual work | Cost | Actual cost | 负责人 |
| --- | --- | --- | --- | --- | --- | --- | --- | --- | --- | --- | --- | --- | --- | --- | --- | --- | --- | --- | --- |
| 43 | 3.1.2 | **需求分析** |  | 27.38ed | 2017-11-06 09:00 | 2017-12-03 18:00 |  | 88% | 3.42ed | 2017-11-06 11:00 |  |  |  |  | 12h | 10h | 371.64 | 309.7 | 葛倍良 |
| 44 | 3.1.2.1 | 绘制关联图 | manual | 1h | 2017-11-06 11:00 A | 2017-11-06 12:00 A | 20 | 100% |  |  |  |  |  | 葛倍良 | 1h | 1h | 30.97 | 30.97 |  |
| 45 | 3.1.2.2 | 创建开发原型 |  | 3h | 2017-11-07 09:00 A | 2017-11-07 12:00 A | 44 | 100% |  |  |  |  |  | 余倩 | 3h | 3h | 92.91 | 92.91 |  |
| 46 | 3.1.2.3 | 确定需求优先级 |  | 1h | 2017-11-18 09:00 A | 2017-11-18 10:00 A | 45 | 100% |  |  |  |  | start no earlier than 2017-11-08 09:00 | 周雨璐; 金浩楠 | 2h | 2h | 61.94 | 61.94 |  |
| 47 | 3.1.2.4 | 为需求建立模型 |  | 1h | 2017-11-19 09:00 A | 2017-11-19 10:00 A | 46 | 100% |  |  |  |  | start no earlier than 2017-11-10 09:00 | 黄鹏羽; 金浩楠 | 2h | 2h | 61.94 | 61.94 |  |
| 48 | 3.1.2.5 | 编写数据字典 |  | 1h | 2017-11-26 09:00 A | 2017-11-26 10:00 A | 47 | 100% |  |  |  |  | start no earlier than 2017-11-09 09:00 | 葛倍良; 黄鹏羽 | 2h | 2h | 61.94 | 61.94 |  |
| 49 | 3.1.2.6 | 应用质量功能调配 |  | 1h | 2017-11-26 10:00 | 2017-11-26 11:00 | 48 |  |  |  | -3.75d | 0d | start no earlier than 2017-11-10 09:00 | 余倩; 周雨璐 | 2h |  | 61.94 |  |  |
| 50 | 3.1.3 | **需求规格说明** |  | 14.38ed | 2017-11-19 09:00 | 2017-12-03 18:00 | 49 | 20% | 11.5ed | 2017-11-25 09:00 |  |  |  |  | 14h | 2h | 433.58 | 61.94 | 葛倍良 |
| 51 | 3.1.3.1 | 采用软件需求规格说明模板 |  | 2h | 2017-11-25 09:00 A | 2017-11-25 11:00 A | 49 | 100% |  |  |  |  | start no earlier than 2017-11-25 09:00 | 葛倍良 | 2h | 2h | 61.94 | 61.94 |  |
| 52 | 3.1.3.2 | 指明需求来源 |  | 1h | 2017-12-01 09:00 | 2017-12-01 10:00 | 51 |  |  |  | 3.25d | 0d | start no earlier than 2017-12-01 09:00 | 黄鹏羽 | 1h |  | 30.97 |  |  |
| 53 | 3.1.3.3 | 记录业务规范 |  | 2h | 2017-12-01 10:00 | 2017-12-01 12:00 | 52 |  |  |  | 3.25d | 0d | start no earlier than 2017-11-17 09:00 | 周雨璐 | 2h |  | 61.94 |  |  |
| 54 | 3.1.3.4 | 为每一需求注上标号 |  | 1h | 2017-12-01 13:00 | 2017-12-01 14:00 | 53 |  |  |  | 3.25d | 0d | start no earlier than 2017-11-20 09:00 | 余倩 | 1h |  | 30.97 |  |  |
| 55 | 3.1.3.5 | 创建需求跟踪能力矩阵 |  | 3h | 2017-12-01 14:00 | 2017-12-01 17:00 | 54 |  |  |  | 3.25d | 1.12d | start no earlier than 2017-11-22 09:00 | 金浩楠 | 3h |  | 92.91 |  |  |
| 56 | 3.1.3.6 | 发布SRS | milestone, manual | 1h | 2017-12-03 09:00 | 2017-12-03 10:00 | 55 |  |  |  |  |  |  | 葛倍良; 黄鹏羽; 金浩楠; 余倩; 周雨璐 | 5h |  | 154.85 |  |  |
| 57 | 3.1.4 | **需求规格审核** |  | 7d | 2017-12-03 09:00 | 2017-12-10 09:00 | 56 |  |  |  |  |  |  |  | 14h |  | 433.58 |  | 葛倍良 |
| 58 | 3.1.4.1 | 审查需求文档 |  | 2h | 2017-12-03 10:00 | 2017-12-03 12:00 | 56 |  |  |  | 2.12d | 0d |  | 葛倍良 | 2h |  | 61.94 |  |  |
| 59 | 3.1.4.2 | 编写测试用例 |  | 6h | 2017-12-03 13:00 | 2017-12-04 10:00 | 58 |  |  |  | 2.12d | 0d | start no earlier than 2017-11-28 09:00 | 葛倍良 [20%]; 黄鹏羽 [20%]; 金浩楠 [20%]; 余倩 [20%]; 周雨璐 [20%] | 6h |  | 185.82 |  |  |
| 60 | 3.1.4.3 | 编写用户手册 |  | 4h | 2017-12-04 10:00 | 2017-12-04 15:00 | 59 |  |  |  | 2.12d | 0d | start no earlier than 2017-11-29 09:00 | 葛倍良 [20%]; 黄鹏羽 [20%]; 金浩楠 [20%]; 余倩 [20%]; 周雨璐 [20%] | 4h |  | 123.88 |  |  |
| 61 | 3.1.4.4 | 确定合格的标准 |  | 2h | 2017-12-04 15:00 | 2017-12-04 17:00 | 60 |  |  |  | 2.12d | 0d | start no earlier than 2017-11-30 09:00 | 葛倍良 [20%]; 黄鹏羽 [20%]; 金浩楠 [20%]; 余倩 [20%]; 周雨璐 [20%] | 2h |  | 61.94 |  |  |
| 62 | 3.2 | **需求管理** |  | 13.38ed | 2017-12-04 09:00 | 2017-12-17 18:00 | 61 |  |  |  |  |  |  |  | 30h |  | 929.1 |  | 葛倍良 |
| 63 | 3.2.1 | 确定变更控制过程 |  | 2h | 2017-12-05 08:00 | 2017-12-05 10:00 | 61 |  |  |  | 5.75d | 0d |  | 葛倍良 | 2h |  | 61.94 |  |  |
| 64 | 3.2.2 | 建立变更控制委员会 |  | 2h | 2017-12-05 10:00 | 2017-12-05 12:00 | 63 |  |  |  | 5.75d | 0d |  | 葛倍良 [20%]; 黄鹏羽 [20%]; 金浩楠 [20%]; 余倩 [20%]; 周雨璐 [20%] | 2h |  | 61.94 |  |  |
| 65 | 3.2.3 | 进行变更影响分析 |  | 4h | 2017-12-05 13:00 | 2017-12-05 17:00 | 64 |  |  |  | 5.75d | 0.12d | start no earlier than 2017-12-05 09:00 | 葛倍良 [20%]; 黄鹏羽 [20%]; 金浩楠 [20%]; 余倩 [20%]; 周雨璐 [20%] | 4h |  | 123.88 |  |  |
| 66 | 3.2.4 | 跟踪每一项变更 |  | 2h | 2017-12-06 09:00 | 2017-12-06 11:00 | 65 |  |  |  | 5.62d | 0.75d | start no earlier than 2017-12-06 09:00 | 金浩楠 | 2h |  | 61.94 |  |  |
| 67 | 3.2.5 | 第十周小组会议 | manual | 1h | 2017-12-07 09:00 | 2017-12-07 10:00 | 66 |  |  |  |  |  |  | 葛倍良 [20%]; 黄鹏羽 [20%]; 金浩楠 [20%]; 余倩 [20%]; 周雨璐 [20%] | 1h |  | 30.97 |  |  |
| 68 | 3.2.6 | 编写需求文档的标准版本和控制版本 |  | 6h | 2017-12-07 10:00 | 2017-12-07 17:00 | 67 |  |  |  | 4.88d | 0.12d | start no earlier than 2017-12-07 09:00 | 葛倍良 [20%]; 黄鹏羽 [20%]; 金浩楠 [20%]; 余倩 [20%]; 周雨璐 [20%] | 6h |  | 185.82 |  |  |
| 69 | 3.2.7 | 维护变更历史记录 |  | 4h | 2017-12-08 09:00 | 2017-12-08 14:00 | 68 |  |  |  | 4.75d | 2.5d | start no earlier than 2017-12-08 09:00 | 周雨璐 | 4h |  | 123.88 |  |  |
| 70 | 3.2.8 | 跟踪需求状态 |  | 4h | 2017-12-11 09:00 | 2017-12-11 14:00 | 69 |  |  |  | 2.25d | 0.5d | start no earlier than 2017-12-11 09:00 | 余倩 | 4h |  | 123.88 |  |  |
| 71 | 3.2.9 | 衡量需求稳定性 |  | 2h | 2017-12-12 09:00 | 2017-12-12 11:00 | 70 |  |  |  | 1.75d |  | start no earlier than 2017-12-12 09:00 | 金浩楠 | 2h |  | 61.94 |  |  |
| 72 | 3.2.10 | 第十一周小组会议 | manual | 1h | 2017-12-14 09:00 | 2017-12-14 10:00 | 71 |  |  |  |  |  |  | 葛倍良 [20%]; 黄鹏羽 [20%]; 金浩楠 [20%]; 余倩 [20%]; 周雨璐 [20%] | 1h |  | 30.97 |  |  |
| 73 | 3.2.11 | 使用需求管理工具 |  | 2h | 2017-12-14 10:00 | 2017-12-14 12:00 | 72 |  |  |  | 0d |  | start no earlier than 2017-12-14 09:00 | 葛倍良 | 2h |  | 61.94 |  |  |

| ID | WBS | Task | Type | Duration | Start | Finish | Predecessors | Resources | Work | Cost | 负责人 |
| --- | --- | --- | --- | --- | --- | --- | --- | --- | --- | --- | --- |
| 74 | 4 | **项目收尾阶段** |  | 16ed | 2018-01-01 09:00 | 2018-01-17 09:00 | 73 |  | 27h | 836.19 | 葛倍良 |
| 75 | 4.1 | 文档编写与PPT制作 | manual | 10h | 2017-12-14 13:00 | 2017-12-15 15:00 | 73 | 葛倍良 [20%]; 黄鹏羽 [20%]; 金浩楠 [20%]; 余倩 [20%]; 周雨璐 [20%] | 10h | 309.7 |  |
| 76 | 4.2 | 第十四周小组会议 | manual | 1h | 2018-01-04 09:00 | 2018-01-04 10:00 | 75 | 葛倍良 [20%]; 黄鹏羽 [20%]; 金浩楠 [20%]; 余倩 [20%]; 周雨璐 [20%] | 1h | 30.97 |  |
| 77 | 4.3 | 答辩与评价 | manual | 5h | 2018-01-08 09:00 | 2018-01-08 15:00 | 76 | 葛倍良 [20%]; 黄鹏羽 [20%]; 金浩楠 [20%]; 余倩 [20%]; 周雨璐 [20%] | 5h | 154.85 |  |
| 78 | 4.4 | 第十五周小组会议 | manual | 1h | 2018-01-11 09:00 | 2018-01-11 10:00 | 77 | 葛倍良 [20%]; 黄鹏羽 [20%]; 金浩楠 [20%]; 余倩 [20%]; 周雨璐 [20%] | 1h | 30.97 |  |
| 79 | 4.5 | 经验总结 | manual | 2h | 2018-01-11 10:00 | 2018-01-11 12:00 | 78 | 葛倍良 [20%]; 黄鹏羽 [20%]; 金浩楠 [20%]; 余倩 [20%]; 周雨璐 [20%] | 2h | 61.94 |  |
| 80 | 4.6 | 项目总结报告 | milestone, manual | 8h | 2018-01-13 09:00 | 2018-01-14 09:00 | 79 | 葛倍良 [20%]; 黄鹏羽 [20%]; 金浩楠 [20%]; 余倩 [20%]; 周雨璐 [20%] | 8h | 247.76 |  |
